# MEJORAMIENTO_DEL_SERVICIO_EDUCAT

Schedule from MS Project, 2021-09-20 to 2022-01-27, costs in S/..

## Calendars

- Estándar: Mon-Sat 09:00-13:00, 15:00-19:00; Sun off.

## Resources

| Resource | Group | Unit | Rate |
| --- | --- | --- | --- |
| OPERARIO | MANO DE OBRA |  | 21.95 |
| PEON | MANO DE OBRA |  | 15.56 |
| ORDENADOR DE CABLES 2UR | MATERIALES | und | 258 |
| JACK RJ45 CAT6A | MATERIALES | und | 62 |
| PATCH PANEL DE 24 PUERTOS CAT6A | MATERIALES | und | 460 |
| ACCESS POINT WI-FI OMNIDIRECCIONALES | MATERIALES | und | 1750 |
| GABINETE DE PISO DE 42 RU | MATERIALES | und | 6000 |
| UPS RACKEABLE 2000VA | MATERIALES | und | 4000 |
| POWER RACK | EQUIPO | und | 1400 |
| SWITCH DE 24 PUERTOS RJ45 10/100/1000Mbps | MATERIALES | und | 6900 |
| CABLE FPL ANTIFLAMA 2X16AWG LSZH | MATERIALES |  | 1.45 |
| INYECTOR DE AIRE | MATERIALES |  | 2.3 |
| EXTRACTOR DE AIRE | MATERIALES | und | 1720 |
| CÁMARAS IP DOMO PoE IP67 IK10 | MATERIALES | und | 530 |
| SWITCH DE 24 PUERTOS RJ45 10/100/1000Mbps_2 | MATERIALES | und | 5200 |
| CABLE CAT 6A | MATERIALES |  | 2.7 |
| GABINETE DE PARED DE 12 RU | MATERIALES | und | 4500 |
| UPS RACKEABLE 19" 1500VA | MATERIALES | und | 4000 |
| INYECTOR DE AIRE_2 | MATERIALES |  | 5400 |
| CÁMARAS IP DOMO PoE IP67 IK10_2 | MATERIALES | und | 1600 |
| GABINETE DE PARED DE 12 RU_2 | MATERIALES | und | 4900 |
| CENTRAL TELEFÓNICA IP HÍBRIDA | MATERIALES | und | 5750 |
| CABLE NLT 12 AWG | MATERIALES |  | 6 |
| SENSOR DE MONOXIDO | MATERIALES | und | 450 |
| CÁMARA IP WIFI IP67 IK10 | MATERIALES | und | 750 |
| CENTRAL DE DETECCIÓN Y ALARMA CONTRAINCENDIO | MATERIALES | und | 5500 |
| PEGAMENTO PARA TUBERIA PVC | MATERIALES | gln | 183.16 |
| TUBO DE PVC PARA INSTALACIONES ELECTRICAS SAP 3/4" | MATERIALES |  | 1.91 |
| TELEFONO IP POE SMART | MATERIALES | und | 1890 |
| TELEFONO IP POE SMART_2 | MATERIALES | und | 1950 |
| PIEDRA CHANCADA DE 1/2" | MATERIALES | m³ | 60 |
| AGUA | MATERIALES | m³ | 5 |
| ARENA GRUESA | MATERIALES | m³ | 60 |
| CEMENTO PORTLAND TIPO I | MATERIALES | bol | 24 |
| OFICIAL | MANO DE OBRA |  | 17.59 |
| ARENA FINA | MATERIALES | m³ | 80 |
| TIERRA CERNIDA | MATERIALES | m³ | 36.58 |
| CINTA SEÑALIZADORA | MATERIALES |  | 0.18 |
| CABLE TELEFONICO DE 10 PARES 22 AWG | MATERIALES |  | 0.77 |
| PATCH PANEL DE 48 PUERTOS CAT 6A | MATERIALES | und | 540 |
| RACK DE COMUNICACIONES 38UR | MATERIALES | und | 4900 |
| CAJA CUADRADA DE PVC IP56 150x150x70mm. | MATERIALES | und | 22 |
| CINTA AISLANTE | MATERIALES | und | 7.71 |
| CURVA PVC-P (ELECT) Ø 20mm | MATERIALES | und | 0.6 |
| CONECTOR PVC DE Ø 50mm | MATERIALES | und | 0.35 |
| ODF DE 12 PUERTOS SFC | MATERIALES | und | 663.3 |
| TOMA DE PARED (FACEPLATE) | MATERIALES | und | 22.14 |
| CAJA DE PASE GALVANIZADA DE 4" X 4"X 2" | MATERIALES | pza | 9.99 |
| PLACA DE ALUMINIO ANONIZADO 1 HUECO | MATERIALES | und | 9.36 |
| TUBO PVC ELECTRICO DE 20mm x 3m | MATERIALES |  | 1 |
| CURVA PVC ELECTRICO DE 20mm | MATERIALES | und | 0.6 |
| RACK DE COMUNICACIONES 12UR ADOSABLE A PARED | MATERIALES | und | 850 |
| CABLE NLT 12 AWG | MATERIALES |  | 1.1 |
| DETECTOR DE HUMO FOTOELECTRICO | MATERIALES | und | 250 |
| TIMBRE AUTOMATICO | MATERIALES | und | 410 |
| CABLE HDMI | MATERIALES |  | 6.23 |
| PATCH PANEL DE 48 PUERTOS CAT6 | MATERIALES | und | 540 |
| TUBO DE PVC PARA INSTALACIONES ELECTRICAS SAP 1" | MATERIALES |  | 2.86 |
| CABLE ÓPTICO MULTIMODO 6 FIBRAS | MATERIALES |  | 5.82 |
| CAJA DE REGISTRO DE ACOMETIDA PVC IP65 250mm x 200mm x 100mm | MATERIALES | und | 90.13 |
| SIRENA ESTROBOSCÓPICA | MATERIALES | und | 292.88 |
| CABLE VGA | MATERIALES |  | 1.76 |
| GABINETE DE PISO DE 42 RU_2 | MATERIALES | und | 12000 |
| SWITCH DE 24 PUERTOS RJ45 10/100/1000Mbps_3 | MATERIALES | und | 7100 |
| TUBO DE PVC PARA INSTALACIONES ELECTRICAS SAP 1 1/2" | MATERIALES |  | 5.69 |
| CABLE ÓPTICO MULTIMODO 36 FIBRAS | MATERIALES |  | 2.75 |
| GABINETE DE PARED DE 12 RU_3 | MATERIALES | und | 5200 |
| CABLE A/V ANALÓGICO | MATERIALES |  | 1.76 |
| CÁMARA IP WIFI IP67 IK10_2 | MATERIALES | und | 1500 |
| GRAVA DIVERSA GRANULOMETRIA | MATERIALES | m³ | 60 |
| CAMION VOLQUETE 4x2 210-280 HP 8 M3. | EQUIPO |  | 13.75 |
| CARGADOR S/LLANTAS 125 HP 2.5 YD3. | EQUIPO |  | 20 |
| GRABADORA DE VIDEO DE RED (NVR) - 32 CANALES | MATERIALES | und | 4100 |
| TELÉFONO IP DE ESCRITORIO | MATERIALES | und | 181.5 |
| TELEFONO IP POE SMART_3 | MATERIALES | und | 1850 |
| CONTROLADOR DE TIMBRES PROGRAMABLE | MATERIALES | und | 49.5 |
| TELÉFONO IP ADOSABLE A PARED | MATERIALES | und | 520 |
| PORTERO INTERCOMUNICADOR IP | MATERIALES | und | 98.99 |
| CHAPA ELÉCTRICA IP | MATERIALES | und | 142.99 |
| PATCH CORD S/FTP CAT6A X 1m | MATERIALES | und | 30.89 |
| PATCH CORD S/FTP CAT6A X 3m | MATERIALES | und | 40 |
| ACCESS POINT WI-FI OMNIDIRECCIONALES_2 | MATERIALES | und | 125.65 |
| CABLE NLT 12 AWG_2 | MATERIALES |  | 1.25 |
| HERRAMIENTAS MANUALES | EQUIPO | %mo | 20305.5 |
| Herramientas | EQUIPO | %mo | 1951.5 |

## Schedule

| ID | WBS | Task | Duration | Start | Finish | Predecessors | Total slack | Free slack | Constraint | Resources | Work | Cost |
| --- | --- | --- | --- | --- | --- | --- | --- | --- | --- | --- | --- | --- |
| 1 | 1 | **ADICIONALES** | 112d | 2021-09-20 | 2022-01-27 |  | 0d |  |  |  | 15368.9h | 1,009,594.92 |
| 2 | 1.1 | **INSTALACIONES ESPECIALES** | 112d | 2021-09-20 | 2022-01-27 |  | 0d |  |  |  | 15368.9h | 1,009,594.92 |
| 3 | 1.1.1 | **ACOMETIDAS Y BACKBONES** | 80d | 2021-09-20 | 2021-12-21 |  | 32d |  |  |  | 4016.91h | 451,419.06 |
| 4 | 1.1.1.1 | **RACK DE COMUNICACIONES** | 31d | 2021-11-01 | 2021-12-06 |  | 22d |  |  |  | 1664h | 266,462.94 |
| 5 | 1.1.1.1.1 | GABINETE DE PISO PARA COMUNICACIONES 42UR | 6d | 2021-11-01 | 2021-11-06 |  | 22d | 0d | start no earlier than 2021-11-01 | OPERARIO; PEON; GABINETE DE PISO DE 42 RU [2 und]; UPS RACKEABLE 2000VA [2 und]; POWER RACK [2 und]; HERRAMIENTAS MANUALES [0 %mo] | 128h | 25,271.71 |
| 6 | 1.1.1.1.2 | GABINETE DE PISO PARA COMUNICACIONES 12UR | 25d | 2021-11-08 | 2021-12-06 | 5 | 45d |  |  | OPERARIO; PEON; GABINETE DE PARED DE 12 RU [15 und]; UPS RACKEABLE 19" 1500VA [15 und]; POWER RACK [15 und]; HERRAMIENTAS MANUALES [0.04 %mo] | 960h | 167,404.33 |
| 7 | 1.1.1.1.3 | GABINETE DE PARED PARA COMUNICACIONES 12UR | 12d | 2021-11-08 | 2021-11-20 | 5 | 58d |  |  | OPERARIO; PEON; GABINETE DE PARED DE 12 RU_2 [6 und]; UPS RACKEABLE 19" 1500VA [6 und]; POWER RACK [6 und]; HERRAMIENTAS MANUALES [0.03 %mo] | 576h | 73,786.9 |
| 8 | 1.1.1.2 | **EQUIPOS Y ACCESORIOS** | 38d | 2021-11-08 | 2021-12-21 |  | 22d |  |  |  | 1523.17h | 164,588.14 |
| 9 | 1.1.1.2.1 | SWITCH CORE DE 24 PUERTOS RJ45 10/100/1000Mbps | 3d | 2021-11-08 | 2021-11-10 | 5 | 22d | 0d |  | OPERARIO; SWITCH DE 24 PUERTOS RJ45 10/100/1000Mbps [2 und]; HERRAMIENTAS MANUALES [0 %mo] | 16h | 14,161.35 |
| 10 | 1.1.1.2.2 | SWITCH POE DE 24 PUERTOS RJ45 10/100/1000Mbps | 30d | 2021-11-11 | 2021-12-15 | 9 | 22d | 0d |  | OPERARIO; SWITCH DE 24 PUERTOS RJ45 10/100/1000Mbps_2 [20 und]; HERRAMIENTAS MANUALES [0.01 %mo] | 160h | 107,617.59 |
| 11 | 1.1.1.2.3 | CENTRAL TELEFÓNICA IP HÍBRIDA | 3d | 2021-11-08 | 2021-11-10 | 5 | 32d | 0d |  | OPERARIO; PEON; CENTRAL TELEFÓNICA IP HÍBRIDA [1 und]; HERRAMIENTAS MANUALES [0 %mo]; Herramientas [0.01 %mo] | 16h | 6,073.23 |
| 12 | 1.1.1.2.4 | CENTRAL DE DETECCIÓN Y ALARMA CONTRAINCENDIO | 3d | 2021-11-11 | 2021-11-13 | 11 | 32d | 0d |  | OPERARIO; CENTRAL DE DETECCIÓN Y ALARMA CONTRAINCENDIO [2 und]; HERRAMIENTAS MANUALES [0 %mo] | 6.4h | 11,144.54 |
| 13 | 1.1.1.2.5 | **CONFIGURACION DE EQUIPOS** | 32d | 2021-11-15 | 2021-12-21 |  | 32d |  |  |  | 1324.77h | 25,591.43 |
| 14 | 1.1.1.2.5.1 | CONFIGURACION DE SISTEMA DE DETECCION DE HUMO | 16d | 2021-11-15 | 2021-12-02 | 12 | 48d |  |  | PEON; OPERARIO; HERRAMIENTAS MANUALES [0.03 %mo] | 1087.98h | 21,016.29 |
| 15 | 1.1.1.2.5.2 | CONFIGURACION DE TELEFONOS IP | 16d | 2021-11-15 | 2021-12-02 | 12 | 32d | 0d |  | PEON; OPERARIO; HERRAMIENTAS MANUALES [0.01 %mo] | 204.8h | 3,956.7 |
| 16 | 1.1.1.2.5.3 | CONFIGURACION DE SISTEMA DE CENTRAL TELEFONICA | 16d | 2021-12-03 | 2021-12-21 | 12, 15 | 32d |  |  | PEON; OPERARIO; HERRAMIENTAS MANUALES [0 %mo] | 32h | 618.43 |
| 17 | 1.1.1.3 | **CONDUCTORES DE COMUNICACIONES** | 24d | 2021-09-20 | 2021-10-16 |  | 88d |  |  |  | 829.73h | 20,367.98 |
| 18 | 1.1.1.3.1 | TENDIDO DE CABLE FPL ANTIFLAMA 2X16AWG LSZH | 5d | 2021-09-20 | 2021-09-24 |  | 88d | 0d |  | OPERARIO; PEON; CABLE FPL ANTIFLAMA 2X16AWG LSZH [49502.7%]; HERRAMIENTAS MANUALES [0.01 %mo] | 302.17h | 6,555.12 |
| 19 | 1.1.1.3.2 | TENDIDO DE CABLE FTP CAT 6A | 12d | 2021-09-25 | 2021-10-08 | 18 | 88d | 0d |  | OPERARIO; PEON; CABLE CAT 6A [64163%]; HERRAMIENTAS MANUALES [0.01 %mo] | 390.32h | 9,271.7 |
| 20 | 1.1.1.3.3 | TENDIDO DE CABLE NLT CALIBRE 12 AWG | 7d | 2021-10-09 | 2021-10-16 | 19 | 88d |  |  | OPERARIO; PEON; CABLE NLT 12 AWG [31500%]; HERRAMIENTAS MANUALES [0 %mo] | 137.25h | 4,541.16 |
| 21 | 1.1.2 | **RED DE VOZ, VIDEO Y DATOS** | 112d | 2021-09-20 | 2022-01-27 |  | 0d |  |  |  | 11352h | 558,175.86 |
| 22 | 1.1.2.1 | **PATCH PANEL** | 15d | 2021-12-16 | 2022-01-01 |  | 22d |  |  |  | 216h | 63,937.48 |
| 23 | 1.1.2.1.1 | PATCH PANEL 24 PUERTOS CAT6A | 15d | 2021-12-16 | 2022-01-01 | 10 | 22d |  |  | OPERARIO; PEON; ORDENADOR DE CABLES 2UR [27 und]; JACK RJ45 CAT6A [648 und]; PATCH PANEL DE 24 PUERTOS CAT6A [27 und]; HERRAMIENTAS MANUALES [0.01 %mo]; Herramientas [0.1 %mo] | 216h | 63,937.48 |
| 24 | 1.1.2.2 | **EQUIPOS Y ACCESORIOS** | 60d | 2021-09-20 | 2021-11-27 |  | 52d |  |  |  | 1849.63h | 285,723.13 |
| 25 | 1.1.2.2.1 | ACCESS POINT WI-FI POE OMNIDIRECCIONALES | 30d | 2021-09-20 | 2021-10-23 |  | 52d | 0d |  | OPERARIO; PEON; ACCESS POINT WI-FI OMNIDIRECCIONALES [72 und]; HERRAMIENTAS MANUALES [0.03 %mo]; Herramientas [0.55 %mo] | 1152h | 149,333.46 |
| 26 | 1.1.2.2.2 | CÁMARAS IP DOMO PoE IP67 IK10 | 15d | 2021-10-25 | 2021-11-10 | 25 | 52d | 0d |  | OPERARIO; PEON; CÁMARAS IP DOMO PoE IP67 IK10 [63 und]; HERRAMIENTAS MANUALES [0.01 %mo]; Herramientas [0.1 %mo] | 201.62h | 37,473.88 |
| 27 | 1.1.2.2.3 | CÁMARAS IP PTZ DOMO PoE IP67 IK10 | 15d | 2021-11-11 | 2021-11-27 | 26 | 52d |  |  | OPERARIO; PEON; CÁMARAS IP DOMO PoE IP67 IK10_2 [10 und]; HERRAMIENTAS MANUALES [0 %mo]; Herramientas [0.02 %mo] | 32h | 16,648.53 |
| 28 | 1.1.2.2.4 | CÁMARA IP WIFI IP67 IK10 | 5d | 2021-09-20 | 2021-09-24 |  | 83d | 0d |  | OPERARIO; PEON; CÁMARA IP WIFI IP67 IK10 [5 und]; HERRAMIENTAS MANUALES [0 %mo]; Herramientas [0.04 %mo] | 80h | 5,370.01 |
| 29 | 1.1.2.2.5 | TELÉFONO IP POE DE ESCRITORIO | 12d | 2021-09-25 | 2021-10-08 | 28 | 83d | 0d |  | OPERARIO; PEON; TELEFONO IP POE SMART [18 und]; HERRAMIENTAS MANUALES [0.01 %mo]; Herramientas [0.09 %mo] | 192.01h | 37,908.63 |
| 30 | 1.1.2.2.6 | TELÉFONO IP POE DE SMART | 12d | 2021-10-09 | 2021-10-22 | 29 | 83d |  |  | OPERARIO; PEON; TELEFONO IP POE SMART_2 [18 und]; HERRAMIENTAS MANUALES [0.01 %mo]; Herramientas [0.09 %mo] | 192.01h | 38,988.63 |

| ID | WBS | Task | Duration | Start | Finish | Predecessors | Total slack | Resources | Work | Cost |
| --- | --- | --- | --- | --- | --- | --- | --- | --- | --- | --- |
| 31 | 1.1.2.3 | **OBRAS PROVICIONALES** | 90d | 2021-09-20 | 2022-01-01 |  | 0d |  | 2400h | 47,261.84 |
| 32 | 1.1.2.3.1 | ARMADO DE ANDAMIOS PARA INSTALACIONES | 90d | 2021-09-20 | 2022-01-01 |  | 0d | OPERARIO; PEON; HERRAMIENTAS MANUALES [0.11 %mo] | 2400h | 47,261.84 |
| 33 | 1.1.2.4 | **SISTEMA DE EXTRACION DE AIRE** | 82d | 2021-10-25 | 2022-01-27 |  | 0d |  | 6886.39h | 161,253.4 |
| 34 | 1.1.2.4.1 | **CONDUCTORES Y/O CABLES** | 6d | 2021-10-25 | 2021-10-30 |  | 76d |  | 6400h | 124,092.16 |
| 35 | 1.1.2.4.1.1 | CABLE LSZH UNIPOLAR 4mm2 | 6d | 2021-10-25 | 2021-10-30 | 25 | 76d | OPERARIO; PEON; INYECTOR DE AIRE [20000%]; HERRAMIENTAS MANUALES [0.18 %mo] | 6400h | 124,092.16 |
| 36 | 1.1.2.4.2 | **SISTEMA DE EXTRACCION DE AIRE** | 22d | 2022-01-03 | 2022-01-27 |  | 0d |  | 486.39h | 37,161.24 |
| 37 | 1.1.2.4.2.1 | EXTRACTOR DE AIRE | 8d | 2022-01-03 | 2022-01-11 | 32 | 0d | OPERARIO; PEON; EXTRACTOR DE AIRE [10 und]; HERRAMIENTAS MANUALES [0.01 %mo] | 320h | 23,382.32 |
| 38 | 1.1.2.4.2.2 | INYECTOR DE AIRE | 2d | 2022-01-12 | 2022-01-13 | 37 | 0d | OPERARIO; PEON; INYECTOR DE AIRE_2; HERRAMIENTAS MANUALES [0 %mo] | 32h | 6,018.43 |
| 39 | 1.1.2.4.2.3 | SENSOR DE MONOXIDO | 5d | 2022-01-14 | 2022-01-19 | 38 | 0d | OPERARIO; PEON; SENSOR DE MONOXIDO [11 und]; HERRAMIENTAS MANUALES [0 %mo] | 70.4h | 6,310.94 |
| 40 | 1.1.2.4.2.4 | TUBERIA PVC SAP-P Ø 20mm | 7d | 2022-01-20 | 2022-01-27 | 39 | 0d | OPERARIO; PEON; PEGAMENTO PARA TUBERIA PVC [0.1 gln]; TUBO DE PVC PARA INSTALACIONES ELECTRICAS SAP 3/4" [10209.4%]; HERRAMIENTAS MANUALES [0 %mo] | 63.99h | 1,449.55 |
